# Next2Friends HLRM-3

How a schedule from MS Project changed from version to version. A marks actual dates.

## Version 1 (saved 2008-07-11, file Next2Friends HLRM_07.09.08_v2000_2003.mpp)

Note of the change: Other initial import of source

| ID | WBS | Task | Duration | Start | Finish | Predecessors | Complete | Total float | Constraint |
| --- | --- | --- | --- | --- | --- | --- | --- | --- | --- |
| 1 | 1 | **Hardware** | 11d? | 2008-07-03 | 2008-07-17 |  |  | 96d |  |
| 2 |  | Create and configure inline process mock Data Center config | 11d? | 2008-07-03 | 2008-07-17 |  |  | 96d | start no earlier than 2008-07-03 |
| 3 | 2 | **IMS 1.0** | 18d? | 2008-06-09 A | 2008-07-02 |  | 76% | 107d |  |
| 4 | 2.1 | **DB** | 13d | 2008-06-16 A | 2008-07-02 |  | 79% | 107d |  |
| 5 |  | IMS TABLES | 12d | 2008-06-16 A | 2008-07-01 A |  | 100% |  | finish no earlier than 2008-07-01 |
| 6 |  | New chat interface and auto-login (STAGED) | 13d | 2008-06-16 A | 2008-07-02 |  | 95% | 107d | finish no earlier than 2008-07-02 |
| 7 |  | invite friends widget | 12d | 2008-06-16 A | 2008-07-01 A |  | 100% |  | finish no earlier than 2008-07-01 |
| 8 |  | Rich blog editor + Iframe blog entry | 12d | 2008-06-16 | 2008-07-01 |  |  | 108d | finish no earlier than 2008-07-01 |
| 9 |  | Integrate Slider into Video view page (REPLACED WITH BETTER LAYOUT) | 12d | 2008-06-16 A | 2008-07-01 A |  | 100% |  | finish no earlier than 2008-07-01 |
| 10 |  | IMS admin management interface (STAGED) | 12d | 2008-06-16 A | 2008-07-01 |  | 80% | 108d | finish no earlier than 2008-07-01 |
| 11 |  | Mobile phone sign-up | 17d | 2008-06-09 A | 2008-07-01 A |  | 100% |  | start no earlier than 2008-06-09 |
| 12 |  | Business and Personal Signup | 14d? | 2008-06-12 A | 2008-07-01 A |  | 100% |  | start no earlier than 2008-06-12 |
| 13 |  | Ability to Digg / Delicious videos and photos | 17d | 2008-06-09 A | 2008-07-01 A |  | 100% |  | start no earlier than 2008-06-09 |
| 14 |  | Ability to "share" videos / photos | 17d | 2008-06-09 A | 2008-07-01 A |  | 100% |  | start no earlier than 2008-06-09 |
| 15 |  | Feasibility of creating Reporting | 17d | 2008-06-09 A | 2008-07-01 |  | 80% | 108d | start no earlier than 2008-06-09 |
| 16 |  | "Business Opportunity" Tab (Bottom) (STAGED) BASE ONLY | 17d | 2008-06-09 A | 2008-07-01 |  | 90% | 108d | start no earlier than 2008-06-09 |
| 17 |  | "Feedback Tab" (Bottom) | 15d? | 2008-06-11 A | 2008-07-01 A |  | 100% |  | start no earlier than 2008-06-11 |
| 18 |  | "How To" Tab (Bottom) (STAGED) | 15d? | 2008-06-11 A | 2008-07-01 |  | 90% | 108d | start no earlier than 2008-06-11 |
| 19 |  | Contact Importer (STAGED) | 17d | 2008-06-09 A | 2008-07-01 |  | 95% | 108d | start no earlier than 2008-06-09 |
| 20 |  | Change the "Scheduled Events" section on the Blog. (STAGED) | 17d | 2008-06-09 | 2008-07-01 |  |  | 108d | start no earlier than 2008-06-09 |
| 21 |  | External Messages to contain signup link | 17d | 2008-06-09 | 2008-07-01 |  |  | 108d | start no earlier than 2008-06-09 |
| 22 |  | css logo overlay for images by cat/tag | 15d? | 2008-06-11 | 2008-07-01 |  |  | 108d | start no earlier than 2008-06-11 |
| 23 |  | About Us Text | 13.6d | 2008-06-12 A | 2008-07-01 A |  | 100% |  | finish no earlier than 2008-07-01 |
| 24 |  | More Blog tags added | 17d | 2008-06-09 A | 2008-07-01 A |  | 100% |  | start no earlier than 2008-06-09 |
| 25 | 3 | **Phase 1** | 110d | 2008-04-01 A | 2008-09-01 |  | 48% | 64d |  |
| 26 | 3.1 | **Mobile** | 110d | 2008-04-01 A | 2008-09-01 |  | 49% | 64d |  |
| 27 | 3.1.1 | **Live** | 110d | 2008-04-01 A | 2008-09-01 |  | 38% | 64d |  |
| 28 | 3.1.1.1 | **WM5/6** | 22d | 2008-06-02 A | 2008-07-01 |  | 73% | 108d |  |
| 29 |  | BlackJack 2 | 4.4w | 2008-06-02 A | 2008-07-01 |  | 50% | 108d | start no earlier than 2008-06-02 |
| 30 |  | Motorola Q | 4.4w | 2008-06-02 A | 2008-07-01 | 29SS | 95% | 108d | start no earlier than 2008-06-02 |
| 31 | 3.1.1.2 | **BREW** | 61d | 2008-06-09 A | 2008-09-01 |  | 20% | 64d |  |
| 32 |  | LG Voyager (ISSUE) | 1.5mo | 2008-07-22 | 2008-09-01 |  |  | 64d | finish no earlier than 2008-09-01 |
| 33 |  | RAZR | 2.8mo | 2008-06-09 A | 2008-08-25 |  | 25% | 69d | finish no earlier than 2008-08-25 |
| 34 |  | RAZR 2 | 2.8mo | 2008-06-09 A | 2008-08-25 | 33SS | 25% | 69d | finish no earlier than 2008-08-25 |
| 35 | 3.1.1.3 | **BB J2ME** | 23d | 2008-07-02 | 2008-08-01 |  |  | 85d |  |
| 36 |  | BB 8320/30 (ISSUE) | 4.6w | 2008-07-02 | 2008-08-01 |  |  | 85d | start no earlier than 2008-07-02 |
| 37 | 3.1.1.4 | **Symbian** | 15d | 2008-05-13 A | 2008-06-02 A |  | 100% |  |  |
| 38 |  | N75 | 3w | 2008-05-13 A | 2008-06-02 A |  | 100% |  | start no earlier than 2008-05-01 |
| 39 |  | N/E Series | 3w | 2008-05-13 A | 2008-06-02 A | 38SS | 100% |  | start no earlier than 2008-05-01 |
| 40 |  | iPhone (Version Timing) (ISSUE) | 0h | 2008-04-01 | 2008-04-01 |  |  | 174d |  |
| 41 | 3.1.2 | **ASK/TAG - Next2Friends Mobile** | 80d | 2008-05-13 A | 2008-09-01 |  | 61% | 64d |  |
| 42 | 3.1.2.1 | **WM5/6** | 15d | 2008-07-14 A | 2008-08-01 |  | 30% | 85d |  |
| 43 |  | BlackJack 2 | 3w | 2008-07-14 A | 2008-08-01 |  | 30% | 85d | start no earlier than 2008-07-14 |
| 44 |  | Motorola Q | 3w | 2008-07-14 A | 2008-08-01 | 43SS | 30% | 85d | start no earlier than 2008-07-14 |
| 45 | 3.1.2.2 | **BREW** | 25d | 2008-05-19 A | 2008-06-20 |  | 90% | 115d |  |
| 46 |  | RAZR 2 | 1.25mo | 2008-05-19 A | 2008-06-20 |  | 95% | 115d | start no earlier than 2008-05-19 |
| 47 |  | RAZR | 1.25mo | 2008-05-19 A | 2008-06-20 | 46SS | 95% | 115d | start no earlier than 2008-05-19 |
| 48 |  | LG Voyager | 1.25mo | 2008-05-19 A | 2008-06-20 | 47SS | 80% | 115d | start no earlier than 2008-05-19 |
| 49 | 3.1.2.3 | **BB J2ME** | 25d | 2008-07-29 | 2008-09-01 |  |  | 64d |  |
| 50 |  | BB 8320/30 | 1.25mo | 2008-07-29 | 2008-09-01 |  |  | 64d | finish no earlier than 2008-09-01 |
| 51 | 3.1.2.4 | **Symbian** | 15d | 2008-06-23 A | 2008-07-11 |  | 60% | 100d |  |
| 52 |  | N75 | 3w | 2008-06-23 A | 2008-07-11 |  | 60% | 100d | start no earlier than 2008-06-23 |
| 53 |  | N/E Series | 3w | 2008-06-23 A | 2008-07-11 | 52SS | 60% | 100d | start no earlier than 2008-06-23 |
| 54 |  | iPhone | 1.25mo | 2008-06-26 A | 2008-07-30 |  | 25% | 87d | start no earlier than 2008-06-26 |
| 55 |  | J2ME | 1.65mo | 2008-05-13 A | 2008-06-26 |  | 95% | 111d | start no earlier than 2008-05-12 |
| 56 | 3.2 | **Web** | 87d | 2008-05-01 A | 2008-08-29 |  | 47% | 65d |  |
| 57 |  | Full Site SEO | 22d | 2008-05-13 A | 2008-06-11 A |  | 100% |  | start no earlier than 2008-04-01 |
| 58 |  | WPF/E Image Editor | 4.4w | 2008-05-13 A | 2008-06-11 |  | 95% | 122d | start no earlier than 2008-05-01 |
| 59 |  | Features/Downloads | 1.4w | 2008-05-13 A | 2008-05-21 A |  | 100% |  | start no earlier than 2008-05-01 |
| 60 |  | Inbox (NaN) | 1.4w | 2008-05-01 A | 2008-05-09 A |  | 100% |  | start no earlier than 2008-05-01 |
| 61 |  | Comments (GAL/AAF) | 1.4w | 2008-05-01 A | 2008-05-09 A |  | 100% |  | start no earlier than 2008-05-01 |
| 62 |  | 1,2,3 Text Change | 1.4w | 2008-05-01 A | 2008-05-09 A |  | 100% |  | start no earlier than 2008-05-01 |
| 63 |  | Flash Player Logo | 1.4w | 2008-05-01 A | 2008-05-09 A |  | 100% |  | start no earlier than 2008-05-01 |
| 64 |  | View User Profile From Inbox message | 2.4w | 2008-05-01 | 2008-05-16 |  |  | 140d | start no earlier than 2008-05-01 |
| 65 |  | View User Profile From Live Stream | 2.4w | 2008-05-01 A | 2008-05-16 A |  | 100% |  | start no earlier than 2008-05-01 |
| 66 |  | Live Box (Live/Arch) Visual Indicator | 2.4w | 2008-05-01 A | 2008-05-16 A |  | 100% |  | start no earlier than 2008-05-01 |
| 67 |  | People 500 -> Members | 2.4w | 2008-05-01 A | 2008-05-16 A |  | 100% |  | start no earlier than 2008-05-01 |
| 68 |  | Auto Load Chat with check to disable (STAGED) | 2.4w | 2008-05-01 A | 2008-05-16 |  | 95% | 140d | start no earlier than 2008-05-01 |
| 69 |  | BLOG -> 3 per page, Direct ID Access | 2.4w | 2008-05-01 | 2008-05-16 |  |  | 140d | start no earlier than 2008-05-01 |
| 70 |  | Pgallery Clean. Single Photo SEO | 2.4w | 2008-05-01 A | 2008-05-16 A |  | 100% |  | start no earlier than 2008-05-01 |

| ID | WBS | Task | Duration | Start | Finish | Predecessors | Complete | Total float | Constraint |
| --- | --- | --- | --- | --- | --- | --- | --- | --- | --- |
| 71 |  | Home Page (Flash strip/banners) | 2.4w | 2008-05-01 | 2008-05-16 |  |  | 140d | start no earlier than 2008-05-01 |
| 72 |  | Forward to ext. friend (all content) | 2.4w | 2008-05-01 | 2008-05-16 |  |  | 140d | start no earlier than 2008-05-01 |
| 73 |  | Add Blog to Feed (Dash) | 2.4w | 2008-05-01 A | 2008-05-16 A |  | 100% |  | start no earlier than 2008-05-01 |
| 74 |  | Online now for friends indicator | 2.4w | 2008-05-01 A | 2008-05-16 A |  | 100% |  | start no earlier than 2008-05-01 |
| 75 |  | Profile more colors | 3.2w | 2008-05-05 | 2008-05-26 |  |  | 134d | start no earlier than 2008-05-05 |
| 76 |  | User Update email/password | 3.2w | 2008-05-05 A | 2008-05-26 A |  | 100% |  | start no earlier than 2008-05-05 |
| 77 |  | Watermark Photos with N2F logo | 3.2w | 2008-05-05 | 2008-05-26 |  |  | 134d | start no earlier than 2008-05-05 |
| 78 |  | External Video message link from Inbox | 3.2w | 2008-05-05 | 2008-05-26 |  |  | 134d | start no earlier than 2008-05-05 |
| 79 |  | "No Thumb" Indicator Live Streams | 3.2w | 2008-05-05 A | 2008-05-26 A |  | 100% |  | start no earlier than 2008-05-05 |
| 80 |  | Favorites text wrap (REPLACED) | 3.2w | 2008-05-05 A | 2008-05-26 A |  | 100% |  | start no earlier than 2008-05-05 |
| 81 |  | Rich Text wall/blog editing | 2.2w | 2008-06-02 | 2008-06-16 |  |  | 119d | start no earlier than 2008-06-02 |
| 82 |  | Profile Custom Backgrounds | 2.2w | 2008-06-02 | 2008-06-16 |  |  | 119d | start no earlier than 2008-06-02 |
| 83 |  | Who viewed your profile | 2.2w | 2008-06-02 A | 2008-06-16 A |  | 100% |  | start no earlier than 2008-06-02 |
| 84 |  | Birthday Notification to your friends | 2.2w | 2008-06-02 | 2008-06-16 |  |  | 119d | start no earlier than 2008-06-02 |
| 85 |  | Dashboard displays daily text that currently exists under avatar. | 2.2w | 2008-06-02 | 2008-06-16 |  |  | 119d | start no earlier than 2008-06-02 |
| 86 |  | Next2Friends Groups/Events | 4.2w | 2008-06-17 | 2008-07-15 |  |  | 98d | start no earlier than 2008-06-17 |
| 87 |  | Blog engine propagation/implementation | 4.2w | 2008-08-01 | 2008-08-29 |  |  | 65d | start no earlier than 2008-08-01 |
| 88 | 3.2.32 | **New Flash Player (Tool)** | 11d | 2008-07-01 A | 2008-07-15 |  | 85% | 98d |  |
| 89 | 3.2.32.1 | **Flash player (interactive, Phase 1)** | 11d | 2008-07-01 A | 2008-07-15 |  | 85% | 98d |  |
| 90 |  | Flash popup ads (3 sec begin, 10 s/in, 10 s/out) | 2.2w | 2008-07-01 A | 2008-07-15 |  | 85% | 98d | finish no earlier than 2008-07-15 |
| 91 |  | Send external reminder to update stream tag and Desc. | 11d | 2008-06-02 | 2008-06-16 |  |  | 119d | finish no earlier than 2008-06-16 |
| 92 |  | Require user to enter tag and desc. For uploaded content | 11d | 2008-06-02 | 2008-06-16 |  |  | 119d | finish no earlier than 2008-06-16 |
| 93 |  | Who viewed your profile | 14d | 2008-05-27 A | 2008-06-13 A |  | 100% |  | finish no earlier than 2008-06-13 |
| 94 |  | What other's are viewing | 14d | 2008-05-27 | 2008-06-13 |  |  | 120d | finish no earlier than 2008-06-13 |
| 95 |  | End of Day summary for ASK (External report) | 10d | 2008-05-27 | 2008-06-09 |  |  | 124d | finish no earlier than 2008-06-09 |
| 96 |  | Flash Video Editor | 2.15mo | 2008-06-02 | 2008-07-30 |  |  | 87d | start no earlier than 2008-06-02 |
| 97 | 4 | **Phase 2** | 44d | 2008-09-30 | 2008-11-28 |  |  | 0d |  |
| 98 | 4.1 | **Mobile** | 43d | 2008-10-01 | 2008-11-28 |  |  | 0d |  |
| 99 | 4.1.1 | **Live** | 18d | 2008-10-01 | 2008-10-24 |  |  | 25d |  |
| 100 |  | Sony UIQ | 3.6w | 2008-10-01 | 2008-10-24 |  |  | 25d | start no earlier than 2008-10-01 |
| 101 | 4.1.2 | **N2FBlogger** | 33d | 2008-10-01 | 2008-11-14 |  |  | 10d |  |
| 102 |  | J2ME | 1.65mo | 2008-10-01 | 2008-11-14 | 107SS |  | 10d | start no earlier than 2008-10-01 |
| 103 |  | Sony UIQ | 1.65mo | 2008-10-01 | 2008-11-14 | 102SS |  | 10d | start no earlier than 2008-10-01 |
| 104 |  | Symbian | 1.65mo | 2008-10-01 | 2008-11-14 | 105SS |  | 10d | start no earlier than 2008-10-01 |
| 105 |  | WM5/6 | 1.65mo | 2008-10-01 | 2008-11-14 | 108SS |  | 10d | start no earlier than 2008-10-01 |
| 106 |  | BREW | 1.65mo | 2008-10-01 | 2008-11-14 | 104SS |  | 10d | start no earlier than 2008-10-01 |
| 107 |  | iPhone | 1.65mo | 2008-10-01 | 2008-11-14 |  |  | 10d | start no earlier than 2008-10-01 |
| 108 |  | BB J2ME | 1.65mo | 2008-10-01 | 2008-11-14 | 103SS |  | 10d | start no earlier than 2008-10-01 |
| 109 | 4.1.3 | **GEOMessage** | 43d | 2008-10-01 | 2008-11-28 |  |  | 0d |  |
| 110 |  | iPhone | 2.15mo | 2008-10-01 | 2008-11-28 | 112SS |  | 0d | start no earlier than 2008-10-01 |
| 111 |  | J2ME | 2.15mo | 2008-10-01 | 2008-11-28 |  |  | 0d | start no earlier than 2008-10-01 |
| 112 |  | Sony UIQ | 2.15mo | 2008-10-01 | 2008-11-28 | 115SS |  | 0d | start no earlier than 2008-10-01 |
| 113 |  | BB J2ME | 2.15mo | 2008-10-01 | 2008-11-28 | 111SS |  | 0d | start no earlier than 2008-10-01 |
| 114 |  | WM5/6 | 2.15mo | 2008-10-01 | 2008-11-28 | 110SS |  | 0d | start no earlier than 2008-10-01 |
| 115 |  | Symbian | 2.15mo | 2008-10-01 | 2008-11-28 | 116SS |  | 0d | start no earlier than 2008-10-01 |
| 116 |  | BREW | 2.15mo | 2008-10-01 | 2008-11-28 | 113SS |  | 0d | start no earlier than 2008-10-01 |
| 117 | 4.1.4 | **ASK/TAG - Next2Friends Mobile** | 20d | 2008-11-03 | 2008-11-28 |  |  | 0d |  |
| 118 |  | Sony UIQ | 4w | 2008-11-03 | 2008-11-28 |  |  | 0d | start no earlier than 2008-11-03 |
| 119 | 4.2 | **Web** | 34d | 2008-09-30 | 2008-11-15 |  |  | 10d |  |
| 120 |  | Public API BETA | 0d | 2008-09-30 | 2008-09-30 |  |  | 44d | start no earlier than 2008-09-30 |
| 121 |  | User Profile Ad Auction | 0d | 2008-11-15 | 2008-11-15 |  |  | 10d | start no earlier than 2008-11-15 |

## Version 2 (saved 2008-07-24, file Next2Friends HLRM_07.18.08_v2000_2003.mpp)

Note of the change: Other initial import of source

Last finish stays 2008-11-28. Complete tasks 29 → 36.

Changed:

| ID | Task | Start | Finish | Complete | Total float | Other |
| --- | --- | --- | --- | --- | --- | --- |
| 1 | **Hardware** | 2008-07-03 A |  | 0% → 95% |  |  |
| 2 | Create and configure inline process mock Data Center config | 2008-07-03 A |  | 0% → 95% |  |  |
| 3 | **IMS 1.0** |  |  | 76% → 88% |  |  |
| 19 | Contact Importer |  | 2008-07-01 A | 95% → 100% | 108d → none | was named Contact Importer (STAGED) |
| 20 | Change the "Scheduled Events" section on the Blog | 2008-06-09 A | 2008-07-01 A | 0% → 100% | 108d → none | was named Change the "Scheduled Events" section on the Blog. (STAGED) |
| 21 | External Messages to contain signup link | 2008-06-09 A | 2008-07-01 A | 0% → 100% | 108d → none |  |
| 25 | **Phase 1** |  |  | 48% → 54% |  |  |
| 56 | **Web** |  |  | 47% → 59% |  |  |
| 64 | View User Profile From Inbox message (STAGED) | 2008-05-01 A |  | 0% → 95% |  | was named View User Profile From Inbox message |
| 69 | BLOG -> 3 per page, Direct ID Access | 2008-05-01 A | 2008-05-16 A | 0% → 100% | 140d → none |  |
| 72 | Forward to ext. friend (all content) | 2008-05-01 A | 2008-05-16 A | 0% → 100% | 140d → none |  |
| 78 | External Video message link from Inbox | 2008-05-05 A | 2008-05-26 A | 0% → 100% | 134d → none |  |
| 92 | Require user to enter tag and desc. For uploaded content | 2008-06-02 A | 2008-06-16 A | 0% → 100% | 119d → none |  |

## Version 3 (saved 2008-07-29, file Next2Friends HLRM_07.22.08_v2000_2003.mpp)

Note of the change: Other initial import of source

Last finish 2008-11-28 → 2008-12-31 (+33d).

Added:

| ID | Task | Duration | Start | Finish | Predecessors | Constraint | Resources |
| --- | --- | --- | --- | --- | --- | --- | --- |
| 1 | **ROAD MAP YEAR END (HIGH/LOW)** | 197d | 2008-04-01 | 2008-12-31 |  |  |  |
| 2 | RSS all site and profile content (HIGH) (Not Scheduled) | 3w | 2008-07-23 | 2008-08-12 |  | start no earlier than 2008-07-23 |  |
| 3 | Annoy signup prompt (lightbox) 3 popup (HIGH) (Not Scheduled) | 3w | 2008-07-23 | 2008-08-12 |  | start no earlier than 2008-07-23 | Ady; Anthony; Lawrence; Hamid |
| 4 | New Player (HIGH) see below | 0d | 2008-04-01 | 2008-04-01 |  |  |  |
| 5 | Favorites in sub profile (extensive) (HIGH) Not Scheduled) | 1mo | 2008-07-23 | 2008-08-19 |  | start no earlier than 2008-07-23 | Ady; Anthony; Lawrence; Hamid |
| 6 | Profile Larger Color Pallete (HIGH) see below | 1w | 2008-07-23 | 2008-07-29 |  | start no earlier than 2008-07-23 |  |
| 7 | Image Editing (HIGH) see below | 0d | 2008-04-01 | 2008-04-01 |  |  |  |
| 8 | Video Editing (HIGH) see below | 0d | 2008-04-01 | 2008-04-01 |  |  |  |
| 9 | Music (mp3) Upload/Play/Default track profile entrance (HIGH) (Not Scheduled) | 3w | 2008-07-23 | 2008-08-12 |  | start no earlier than 2008-07-23 | Ady; Anthony; Lawrence; Hamid |
| 10 | Friend Visualization, Flash Spider (LOW) (Not Scheduled) | 1mo | 2008-08-13 | 2008-09-09 | 2 | start no earlier than 2008-07-23 | Ady; Chris; Lawrence |
| 11 | GEOTAG All Content selection (LOW) (Not Scheduled) | 1mo | 2008-07-23 | 2008-08-19 |  | start no earlier than 2008-07-23 | Anthony; Ady; Lawrence; Hamid |
| 12 | Next2Friends LIVE Mobile cat/tag selection (LOW) (Not Scheduled) | 1mo | 2008-07-23 | 2008-08-19 |  | start no earlier than 2008-07-23 | Anthony; Stefano |
| 13 | Distance to Friend m/km pop gmaps (HIGH) (Not Scheduled) | 2w | 2008-07-23 | 2008-08-05 |  | start no earlier than 2008-07-23 | Ady; Lawrence; Hamid |
| 14 | Mobile Download First panel contents (LOW) (Not Scheduled) | 1w | 2008-07-23 | 2008-07-29 |  | start no earlier than 2008-07-23 | Ady; Lawrence; Hamid |
| 15 | Search Tab (HIGH) (Not Scheduled) | 2w | 2008-07-23 | 2008-08-05 |  | start no earlier than 2008-07-23 | Ady; Lawrence; Hamid |
| 16 | Proxy split stream (flv & 3gp) Live consume on Mobile (HIGH) (Not Scheduled) | 2w | 2008-07-23 | 2008-08-05 |  | start no earlier than 2008-07-23 | Anthony; Stefano |
| 17 | Content Owner Download (flv & 3gp) (HIGH) (Not Scheduled) | 2w | 2008-08-06 | 2008-08-19 | 16 | start no earlier than 2008-07-23 | Ady; Lawrence; Hamid |
| 18 | Virtual Currency/Store (HIGH) (Not Scheduled) | 1mo | 2008-07-23 | 2008-08-19 |  | start no earlier than 2008-07-23 | Anthony; Ady; Lawrence; Hamid |
| 19 | Groups/Events (HIGH) (Not Scheduled) | 2mo | 2008-07-23 | 2008-09-16 |  | start no earlier than 2008-07-23 | Anthony; Lawrence; Ady; Hamid |
| 20 | ProxTags dashboard inlcusion (LOW) (Not Scheduled) | 1w | 2008-07-23 | 2008-07-29 |  | start no earlier than 2008-07-23 | Lawrence |
| 21 | Mobile Blogging (LOW) See N2F Blogger below | 0d | 2008-12-31 | 2008-12-31 |  | finish no earlier than 2008-12-31 |  |
| 22 | Live Video Widget (HIGH) (Not Scheduled) | 3w | 2008-07-23 | 2008-08-12 |  | start no earlier than 2008-07-23 | Shawn; Clayton; Anthony; Lawrence; Ady |

Removed: 4 DB; 5 IMS TABLES; 6 New chat interface and auto-login (STAGED); 7 invite friends widget; 8 Rich blog editor + Iframe blog entry; 9 Integrate Slider into Video view page (REPLACED WITH BETTER LAYOUT); 10 IMS admin management interface (STAGED)

Changed:

| ID | Task | Start | Finish | Duration | Complete | Total float |
| --- | --- | --- | --- | --- | --- | --- |
| 23 | **Hardware** |  | 2008-07-17 A |  | 95% → 100% | 96d → none |
| 24 | Create and configure inline process mock Data Center config |  | 2008-07-17 A |  | 95% → 100% | 96d → none |
| 25 | **IMS 1.0** |  | 2008-07-02 → 2008-07-01 (-1d) | 18d? → 17d? | 88% → 90% | 107d → 131d |
| 40 | **Phase 1** |  |  |  | 54% → 55% | 64d → 87d |
| 56 | **ASK/TAG - Next2Friends Mobile** |  |  |  | 61% → 62% | 64d → 87d |
| 60 | **BREW** |  |  |  | 90% → 93% | 115d → 138d |
| 61 | RAZR 2 |  | 2008-06-20 A |  | 95% → 100% | 115d → none |
| 62 | RAZR |  | 2008-06-20 A |  | 95% → 100% | 115d → none |
| 71 | **Web** |  |  |  | 59% → 61% | 65d → 88d |
| 99 | Birthday Notification to your friends | 2008-06-02 A |  |  | 0% → 70% | 119d → 142d |
