# Next2Friends HLRM-3

How a schedule from MS Project changed from version to version. A marks actual dates.

## Version 1 (saved 2008-07-31, file Next2Friends HLRM_07.29.08_v2000_2003.mpp)

Note of the change: Other initial import of source

| ID | WBS | Task | Duration | Start | Finish | Predecessors | Complete | Total float | Constraint |
| --- | --- | --- | --- | --- | --- | --- | --- | --- | --- |
| 1 | 1 | **ROAD MAP YEAR END (HIGH/LOW)** | 116d | 2008-07-23 A | 2008-12-31 |  | 7% | 0d |  |
| 2 |  | Social Flea | 67d | 2008-07-30 | 2008-10-30 |  |  | 44d | start no earlier than 2008-07-30 |
| 3 |  | RSS all site and profile content (HIGH) | 5.6w | 2008-07-23 | 2008-08-29 |  |  | 42d | finish no earlier than 2008-08-29 |
| 4 |  | Annoy signup prompt (lightbox) 3 popup (HIGH) | 4.8w | 2008-07-29 | 2008-08-29 |  |  | 88d | start no earlier than 2008-07-29 |
| 5 |  | New Player (HIGH) see below | 8d | 2008-07-30 A | 2008-08-08 |  | 75% | 0d | finish no later than 2008-08-08 |
| 6 |  | Favorites in sub profile (extensive) (HIGH) | 2.3mo | 2008-07-29 | 2008-09-30 |  |  | 66d | start no earlier than 2008-07-29 |
| 7 |  | Profile Larger Color Pallete (HIGH) see below | 2.8w | 2008-07-29 | 2008-08-15 |  |  | 98d | start no earlier than 2008-07-29 |
| 8 |  | Image Editing (HIGH) see phase 1 web | 14d | 2008-07-29 A | 2008-08-15 |  | 90% | 98d | start no earlier than 2008-07-29 |
| 9 |  | Video Editing (HIGH) see phase 1 web | 46d | 2008-07-29 A | 2008-09-30 |  | 50% | 66d | start no earlier than 2008-07-29 |
| 10 |  | Music (mp3) Upload/Play/Default track profile entrance (HIGH) | 2.8w | 2008-07-29 | 2008-08-15 |  |  | 98d | start no earlier than 2008-07-29 |
| 11 |  | Friend Visualization, Flash Spider (LOW) | 1mo | 2008-09-01 | 2008-09-26 | 3 |  | 68d | start no earlier than 2008-07-23 |
| 12 |  | GEOTAG All Content selection (LOW) | 2.3mo | 2008-09-01 | 2008-11-03 | 3 |  | 42d | start no earlier than 2008-07-29 |
| 13 |  | Next2Friends LIVE Mobile cat/tag selection (LOW) | 1mo | 2008-07-23 | 2008-08-19 |  |  | 96d | start no earlier than 2008-07-23 |
| 14 |  | Distance to Friend m/km pop gmaps (HIGH) | 4.8w | 2008-07-29 | 2008-08-29 |  |  | 88d | start no earlier than 2008-07-29 |
| 15 |  | Mobile Download First panel contents (LOW) | 2.8w | 2008-07-29 | 2008-08-15 |  |  | 98d | start no earlier than 2008-07-29 |
| 16 |  | Search Tab (HIGH) | 4.8w | 2008-07-29 | 2008-08-29 |  |  | 88d | start no earlier than 2008-07-29 |
| 17 |  | Proxy split stream (flv & 3gp) Live consume on Mobile (HIGH) | 6.8w | 2008-07-30 | 2008-09-15 |  |  | 67d | start no earlier than 2008-07-30 |
| 18 |  | Content Owner Download (flv & 3gp) (HIGH) | 2w | 2008-09-16 | 2008-09-29 | 17 |  | 67d | start no earlier than 2008-07-23 |
| 19 |  | Virtual Currency/Store (HIGH) | 1.75mo | 2008-07-29 | 2008-09-15 |  |  | 77d | start no earlier than 2008-07-29 |
| 20 |  | Groups/Events (HIGH) | 2mo | 2008-07-23 | 2008-09-16 |  |  | 76d | start no earlier than 2008-07-23 |
| 21 |  | ProxTags dashboard inlcusion (LOW) | 3.4w | 2008-07-29 | 2008-08-20 |  |  | 95d | start no earlier than 2008-07-29 |
| 22 |  | Mobile Blogging (LOW) see phase 2 Mobile | 0d | 2008-12-31 | 2008-12-31 |  |  | 0d | finish no earlier than 2008-12-31 |
| 23 |  | Live Video Widget (HIGH) | 9.2w | 2008-07-29 | 2008-09-30 |  |  | 66d | start no earlier than 2008-07-29 |
| 24 | 2 | **Hardware** | 11d? | 2008-07-03 A | 2008-07-17 A |  | 100% |  |  |
| 25 |  | Create and configure inline process mock Data Center config | 11d? | 2008-07-03 A | 2008-07-17 A |  | 100% |  | start no earlier than 2008-07-03 |
| 26 | 3 | **IMS 1.0** | 50d? | 2008-06-09 A | 2008-08-15 |  | 98% | 98d |  |
| 27 |  | Mobile phone sign-up | 17d | 2008-06-09 A | 2008-07-01 A |  | 100% |  | start no earlier than 2008-06-09 |
| 28 |  | Business and Personal Signup | 14d? | 2008-06-12 A | 2008-07-01 A |  | 100% |  | start no earlier than 2008-06-12 |
| 29 |  | Ability to Digg / Delicious videos and photos | 17d | 2008-06-09 A | 2008-07-01 A |  | 100% |  | start no earlier than 2008-06-09 |
| 30 |  | Ability to "share" videos / photos | 17d | 2008-06-09 A | 2008-07-01 A |  | 100% |  | start no earlier than 2008-06-09 |
| 31 |  | Feasibility of creating Reporting | 17d | 2008-06-09 A | 2008-07-01 A |  | 100% |  | start no earlier than 2008-06-09 |
| 32 |  | "Business Opportunity" Tab (Bottom) | 17d | 2008-06-09 A | 2008-07-01 A |  | 100% |  | start no earlier than 2008-06-09 |
| 33 |  | "Feedback Tab" (Bottom) | 15d? | 2008-06-11 A | 2008-07-01 A |  | 100% |  | start no earlier than 2008-06-11 |
| 34 |  | "How To" Tab (Bottom) (STAGED) | 48d? | 2008-06-11 A | 2008-08-15 |  | 90% | 98d | finish no earlier than 2008-08-15 |
| 35 |  | Contact Importer | 17d | 2008-06-09 A | 2008-07-01 A |  | 100% |  | start no earlier than 2008-06-09 |
| 36 |  | Change the "Scheduled Events" section on the Blog | 17d | 2008-06-09 A | 2008-07-01 A |  | 100% |  | start no earlier than 2008-06-09 |
| 37 |  | External Messages to contain signup link | 17d | 2008-06-09 A | 2008-07-01 A |  | 100% |  | start no earlier than 2008-06-09 |
| 38 |  | About Us Text | 13.6d | 2008-06-12 A | 2008-07-01 A |  | 100% |  | finish no earlier than 2008-07-01 |
| 39 |  | More Blog tags added | 17d | 2008-06-09 A | 2008-07-01 A |  | 100% |  | start no earlier than 2008-06-09 |
| 40 | 4 | **Phase 1** | 109d | 2008-05-01 A | 2008-09-30 |  | 71% | 66d |  |
| 41 | 4.1 | **Mobile** | 84d | 2008-05-13 A | 2008-09-05 |  | 69% | 83d |  |
| 42 | 4.1.1 | **Live** | 84d | 2008-05-13 A | 2008-09-05 |  | 59% | 83d |  |
| 43 | 4.1.1.1 | **WM5/6** | 55d | 2008-06-02 A | 2008-08-15 |  | 75% | 98d |  |
| 44 |  | BlackJack 2 | 11w | 2008-06-02 A | 2008-08-15 |  | 65% | 98d | finish no earlier than 2008-08-15 |
| 45 |  | Motorola Q (BETA COMPLETE) | 4.4w | 2008-06-02 A | 2008-07-01 A | 44SS | 100% |  | start no earlier than 2008-06-02 |
| 46 | 4.1.1.2 | **BREW/J2ME** | 61d | 2008-06-09 A | 2008-09-01 |  | 51% | 87d |  |
| 47 |  | LG Voyager (ISSUE) (NOT POSSIBLE AT THE MOMENT) | 1.5mo | 2008-07-22 | 2008-09-01 |  |  | 87d | finish no earlier than 2008-09-01 |
| 48 |  | RAZR (3GP Parser 80% Complete) | 2.8mo | 2008-06-09 A | 2008-08-25 |  | 65% | 92d | finish no earlier than 2008-08-25 |
| 49 |  | RAZR 2 (3GP Parser 80% Complete) | 2.8mo | 2008-06-09 A | 2008-08-25 | 48SS | 65% | 92d | finish no earlier than 2008-08-25 |
| 50 | 4.1.1.3 | **BB J2ME** | 48d | 2008-07-02 A | 2008-09-05 |  | 34% | 83d |  |
| 51 |  | BB 8320/30 (3GP Parser 80% Complete) | 9.6w | 2008-07-02 A | 2008-09-05 |  | 34% | 83d | finish no earlier than 2008-09-05 |
| 52 | 4.1.1.4 | **Symbian** | 15d | 2008-05-13 A | 2008-06-02 A |  | 100% |  |  |
| 53 |  | N75 | 3w | 2008-05-13 A | 2008-06-02 A |  | 100% |  | start no earlier than 2008-05-01 |
| 54 |  | N/E Series | 3w | 2008-05-13 A | 2008-06-02 A | 53SS | 100% |  | start no earlier than 2008-05-01 |
| 55 | 4.1.2 | **ASK/TAG - Next2Friends Mobile** | 80d | 2008-05-13 A | 2008-09-01 |  | 77% | 87d |  |
| 56 | 4.1.2.1 | **WM5/6** | 25d | 2008-07-14 A | 2008-08-15 |  | 65% | 98d |  |
| 57 |  | BlackJack 2 | 5w | 2008-07-14 A | 2008-08-15 |  | 65% | 98d | finish no earlier than 2008-08-15 |
| 58 |  | Motorola Q | 5w | 2008-07-14 A | 2008-08-15 | 57SS | 65% | 98d | finish no earlier than 2008-08-15 |
| 59 | 4.1.2.2 | **BREW** | 65d | 2008-05-19 A | 2008-08-15 A |  | 100% |  |  |
| 60 |  | RAZR 2 | 1.25mo | 2008-05-19 A | 2008-06-20 A |  | 100% |  | start no earlier than 2008-05-19 |
| 61 |  | RAZR | 1.25mo | 2008-05-19 A | 2008-06-20 A | 60SS | 100% |  | start no earlier than 2008-05-19 |
| 62 |  | LG Voyager (ISSUE) BREW is COMPLETE (VERIZON) | 3.25mo | 2008-05-19 A | 2008-08-15 A | 61SS | 100% |  | finish no earlier than 2008-08-15 |
| 63 | 4.1.2.3 | **BB J2ME** | 25d | 2008-07-29 A | 2008-09-01 |  | 65% | 87d |  |
| 64 |  | BB 8320/30 | 1.25mo | 2008-07-29 A | 2008-09-01 |  | 65% | 87d | finish no earlier than 2008-09-01 |
| 65 | 4.1.2.4 | **Symbian** | 50d | 2008-06-23 A | 2008-08-29 |  | 60% | 88d |  |
| 66 |  | N75 | 10w | 2008-06-23 A | 2008-08-29 |  | 60% | 88d | finish no earlier than 2008-08-29 |
| 67 |  | N/E Series | 10w | 2008-06-23 A | 2008-08-29 | 66SS | 60% | 88d | finish no earlier than 2008-08-29 |
| 68 |  | iPhone | 2.35mo | 2008-06-26 A | 2008-08-29 |  | 60% | 88d | finish no earlier than 2008-08-29 |
| 69 |  | J2ME | 1.65mo | 2008-05-13 A | 2008-06-26 |  | 95% | 134d | start no earlier than 2008-05-12 |
| 70 | 4.2 | **Web** | 109d | 2008-05-01 A | 2008-09-30 |  | 74% | 66d |  |

| ID | WBS | Task | Duration | Start | Finish | Predecessors | Complete | Total float | Constraint |
| --- | --- | --- | --- | --- | --- | --- | --- | --- | --- |
| 71 |  | Full Site SEO | 22d | 2008-05-13 A | 2008-06-11 A |  | 100% |  | start no earlier than 2008-04-01 |
| 72 |  | WPF/E Image Editor (Waiting on Certs for deployment) | 12.2w | 2008-05-13 A | 2008-08-05 |  | 34% | 106d | finish no earlier than 2008-08-05 |
| 73 |  | Features/Downloads | 1.4w | 2008-05-13 A | 2008-05-21 A |  | 100% |  | start no earlier than 2008-05-01 |
| 74 |  | Inbox (NaN) | 1.4w | 2008-05-01 A | 2008-05-09 A |  | 100% |  | start no earlier than 2008-05-01 |
| 75 |  | Comments (GAL/AAF) | 1.4w | 2008-05-01 A | 2008-05-09 A |  | 100% |  | start no earlier than 2008-05-01 |
| 76 |  | 1,2,3 Text Change | 1.4w | 2008-05-01 A | 2008-05-09 A |  | 100% |  | start no earlier than 2008-05-01 |
| 77 |  | Flash Player Logo | 1.4w | 2008-05-01 A | 2008-05-09 A |  | 100% |  | start no earlier than 2008-05-01 |
| 78 |  | View User Profile From Inbox message (STAGED) | 16w | 2008-05-01 A | 2008-08-20 |  | 90% | 95d | finish no earlier than 2008-08-20 |
| 79 |  | View User Profile From Live Stream | 2.4w | 2008-05-01 A | 2008-05-16 A |  | 100% |  | start no earlier than 2008-05-01 |
| 80 |  | Live Box (Live/Arch) Visual Indicator | 2.4w | 2008-05-01 A | 2008-05-16 A |  | 100% |  | start no earlier than 2008-05-01 |
| 81 |  | People 500 -> Members | 2.4w | 2008-05-01 A | 2008-05-16 A |  | 100% |  | start no earlier than 2008-05-01 |
| 82 |  | Auto Load Chat with check to disable (STAGED) | 16w | 2008-05-01 A | 2008-08-20 |  | 90% | 95d | finish no earlier than 2008-08-20 |
| 83 |  | BLOG -> 3 per page, Direct ID Access | 2.4w | 2008-05-01 A | 2008-05-16 A |  | 100% |  | start no earlier than 2008-05-01 |
| 84 |  | Pgallery Clean. Single Photo SEO | 2.4w | 2008-05-01 A | 2008-05-16 A |  | 100% |  | start no earlier than 2008-05-01 |
| 85 |  | Home Page (Flash strip/banners) (Defined) | 2.4w | 2008-05-01 A | 2008-08-04 |  | 90% | 107d | finish no earlier than 2008-08-04 |
| 86 |  | Forward to ext. friend (all content) | 2.4w | 2008-05-01 A | 2008-05-16 A |  | 100% |  | start no earlier than 2008-05-01 |
| 87 |  | Add Blog to Feed (Dash) | 2.4w | 2008-05-01 A | 2008-05-16 A |  | 100% |  | start no earlier than 2008-05-01 |
| 88 |  | Online now for friends indicator | 2.4w | 2008-05-01 A | 2008-05-16 A |  | 100% |  | start no earlier than 2008-05-01 |
| 89 |  | Profile more colors | 3.2w | 2008-07-25 | 2008-08-15 |  |  | 98d | finish no earlier than 2008-08-15 |
| 90 |  | User Update email/password | 3.2w | 2008-05-05 A | 2008-05-26 A |  | 100% |  | start no earlier than 2008-05-05 |
| 91 |  | External Video message link from Inbox | 3.2w | 2008-05-05 A | 2008-05-26 A |  | 100% |  | start no earlier than 2008-05-05 |
| 92 |  | "No Thumb" Indicator Live Streams | 3.2w | 2008-05-05 A | 2008-05-26 A |  | 100% |  | start no earlier than 2008-05-05 |
| 93 |  | Favorites text wrap (REPLACED) | 3.2w | 2008-05-05 A | 2008-05-26 A |  | 100% |  | start no earlier than 2008-05-05 |
| 94 |  | Rich Text wall/blog editing (LOW) (Reschedule) | 2.2w | 2008-07-28 | 2008-08-11 |  |  | 102d | finish no earlier than 2008-08-11 |
| 95 |  | Profile Custom Backgrounds (LOW) (Reschedule) | 2.2w | 2008-06-02 | 2008-06-16 |  |  | 142d | start no earlier than 2008-06-02 |
| 96 |  | Who viewed your profile | 2.2w | 2008-06-02 A | 2008-06-16 A |  | 100% |  | start no earlier than 2008-06-02 |
| 97 |  | Birthday Notification to your friends | 10w | 2008-06-02 A | 2008-08-08 |  | 15% | 103d | finish no earlier than 2008-08-08 |
| 98 |  | Dashboard displays daily text that currently exists under avatar. Yours for others to see. | 2.2w | 2008-07-25 | 2008-08-08 |  |  | 103d | finish no earlier than 2008-08-08 |
| 99 |  | Blog engine propagation/implementation | 4.2w | 2008-08-01 A | 2008-08-29 |  | 75% | 88d | start no earlier than 2008-08-01 |
| 100 | 4.2.30 | **New Flash Player (Tool)** | 29d | 2008-07-01 A | 2008-08-08 |  | 90% | 103d |  |
| 101 | 4.2.30.1 | **Flash player (interactive, Phase 1)** | 29d | 2008-07-01 A | 2008-08-08 |  | 90% | 103d |  |
| 102 |  | Flash popup ads (3 sec begin, 10 s/in, 10 s/out) | 5.8w | 2008-07-01 A | 2008-08-08 |  | 90% | 103d | finish no earlier than 2008-08-08 |
| 103 |  | Send external reminder to update stream tag and Desc. | 11d | 2008-07-25 | 2008-08-08 |  |  | 103d | finish no earlier than 2008-08-08 |
| 104 |  | Require user to enter tag and desc. For uploaded content | 50d | 2008-06-02 A | 2008-08-08 A |  | 100% |  | finish no earlier than 2008-08-08 |
| 105 |  | Who viewed your profile | 14d | 2008-05-27 A | 2008-06-13 A |  | 100% |  | finish no earlier than 2008-06-13 |
| 106 |  | What other's are viewing and or shared | 14d | 2008-05-27 A | 2008-06-13 A |  | 100% |  | finish no earlier than 2008-06-13 |
| 107 |  | Flash Video Editor | 2.15mo | 2008-08-01 A | 2008-09-30 |  | 50% | 66d | finish no earlier than 2008-09-30 |
| 108 | 4.3 | **AMAZE GPS INTEGRATION** | 25d | 2008-08-27 | 2008-09-30 |  |  | 66d |  |
| 109 |  | J2ME Next2Friends Mobile | 25d | 2008-08-27 | 2008-09-30 |  |  | 66d | finish no earlier than 2008-09-30 |
| 110 | 5 | **Phase 2 Mobile Applications** | 88d | 2008-07-30 | 2008-11-28 |  |  | 23d |  |
| 111 | 5.1 | **Mobile** | 88d | 2008-07-30 | 2008-11-28 |  |  | 23d |  |
| 112 | 5.1.1 | **Live** | 63d | 2008-07-30 | 2008-10-24 |  |  | 48d |  |
| 113 |  | iPhone | 448h | 2008-07-30 | 2008-10-15 |  |  | 55d | start no earlier than 2008-07-30 |
| 114 |  | Sony UIQ | 3.6w | 2008-10-01 | 2008-10-24 |  |  | 48d | start no earlier than 2008-10-01 |
| 115 | 5.1.2 | **N2FBlogger** | 33d | 2008-10-01 | 2008-11-14 |  |  | 33d |  |
| 116 |  | J2ME | 1.65mo | 2008-10-01 | 2008-11-14 | 121SS |  | 33d | start no earlier than 2008-10-01 |
| 117 |  | Sony UIQ | 1.65mo | 2008-10-01 | 2008-11-14 | 116SS |  | 33d | start no earlier than 2008-10-01 |
| 118 |  | Symbian | 1.65mo | 2008-10-01 | 2008-11-14 | 119SS |  | 33d | start no earlier than 2008-10-01 |
| 119 |  | WM5/6 | 1.65mo | 2008-10-01 | 2008-11-14 | 122SS |  | 33d | start no earlier than 2008-10-01 |
| 120 |  | BREW | 1.65mo | 2008-10-01 | 2008-11-14 | 118SS |  | 33d | start no earlier than 2008-10-01 |
| 121 |  | iPhone | 1.65mo | 2008-10-01 | 2008-11-14 |  |  | 33d | start no earlier than 2008-10-01 |
| 122 |  | BB J2ME | 1.65mo | 2008-10-01 | 2008-11-14 | 117SS |  | 33d | start no earlier than 2008-10-01 |
| 123 | 5.1.3 | **GEOMessage** | 43d | 2008-10-01 | 2008-11-28 |  |  | 23d |  |
| 124 |  | iPhone | 2.15mo | 2008-10-01 | 2008-11-28 | 126SS |  | 23d | start no earlier than 2008-10-01 |
| 125 |  | J2ME | 2.15mo | 2008-10-01 | 2008-11-28 |  |  | 23d | start no earlier than 2008-10-01 |
| 126 |  | Sony UIQ | 2.15mo | 2008-10-01 | 2008-11-28 | 129SS |  | 23d | start no earlier than 2008-10-01 |
| 127 |  | BB J2ME | 2.15mo | 2008-10-01 | 2008-11-28 | 125SS |  | 23d | start no earlier than 2008-10-01 |
| 128 |  | WM5/6 | 2.15mo | 2008-10-01 | 2008-11-28 | 124SS |  | 23d | start no earlier than 2008-10-01 |
| 129 |  | Symbian | 2.15mo | 2008-10-01 | 2008-11-28 | 130SS |  | 23d | start no earlier than 2008-10-01 |
| 130 |  | BREW | 2.15mo | 2008-10-01 | 2008-11-28 | 127SS |  | 23d | start no earlier than 2008-10-01 |
| 131 | 5.1.4 | **ASK/TAG - Next2Friends Mobile** | 20d | 2008-11-03 | 2008-11-28 |  |  | 23d |  |
| 132 |  | Sony UIQ | 4w | 2008-11-03 | 2008-11-28 |  |  | 23d | start no earlier than 2008-11-03 |
| 133 | 5.2 | **Web** | 34d | 2008-09-30 | 2008-11-15 |  |  | 33d |  |
| 134 |  | Public API BETA | 0d | 2008-09-30 | 2008-09-30 |  |  | 67d | start no earlier than 2008-09-30 |
| 135 |  | User Profile Ad Auction | 0d | 2008-11-15 | 2008-11-15 |  |  | 33d | start no earlier than 2008-11-15 |

## Version 2 (saved 2008-07-31, file Next2Friends HLRM_07.30.08_v2000_2003.mpp)

Note of the change: Other initial import of source

Last finish 2008-12-31 → 2008-11-28 (-33d).

Added:

| ID | Task | Duration | Start | Finish |
| --- | --- | --- | --- | --- |
| 2 | Video messaging from device (Unscheduled) | 1d? | 2008-04-01 | 2008-04-01 |
| 3 | Two way live video conversations form the desktop (and later form mobile) (Unscheduled) | 1d? | 2008-04-01 | 2008-04-01 |
| 4 | Live stream from Webcam (Time Limit) (Unscheduled) | 1d? | 2008-04-01 | 2008-04-01 |
| 5 | Video messaging from device (Unscheduled) | 1d? | 2008-04-01 | 2008-04-01 |

Removed: 5 New Player (HIGH) see below; 7 Profile Larger Color Pallete (HIGH) see below; 8 Image Editing (HIGH) see phase 1 web; 9 Video Editing (HIGH) see phase 1 web; 22 Mobile Blogging (LOW) see phase 2 Mobile; 34 "How To" Tab (Bottom) (STAGED)

Changed:

| ID | Task | Start | Finish | Duration | Complete | Total float | Other |
| --- | --- | --- | --- | --- | --- | --- | --- |
| 1 | **ROAD MAP YEAR END (HIGH/LOW)** | 2008-07-23 A → 2008-04-01 (-113d) | 2008-12-31 → 2008-11-03 (-58d) | 116d → 155d? | 7% → 0% | 0d → 19d |  |
| 25 | **IMS 1.0** |  | 2008-08-15 → 2008-07-01 A (-45d) | 50d? → 17d? | 98% → 100% | 98d → none |  |
| 38 | **Phase 1** |  |  |  | 71% → 73% | 66d → 43d |  |
| 39 | **Mobile** |  |  |  | 69% → 71% | 83d → 60d |  |
| 40 | **Live** |  |  |  | 59% → 64% | 83d → 60d |  |
| 48 | **BB J2ME** |  |  |  | 34% → 60% | 83d → 60d |  |
| 49 | BB 8320/30 (3GP Parser 80% Complete) |  |  |  | 34% → 60% | 83d → 60d |  |
| 106 | **Phase 2** |  |  | 88d → 88d? |  | 23d → 0d | was named Phase 2 Mobile Applications |
| 107 | **Mobile** |  |  | 88d → 88d? |  | 23d → 0d |  |
| 108 | **AMAZE GPS INTEGRATION** | 2008-08-27 → 2008-09-08 (+12d) |  | 25d → 17d? |  | 66d → 43d |  |
| 109 | J2ME Next2Friends Mobile | 2008-08-27 → 2008-09-08 (+12d) |  | 25d → 17d? |  | 66d → 43d | constraint finish no earlier than 2008-09-30 → start no earlier than 2008-09-08; resources Alex; Anthony; Ivan; Vitaliy → none |

## Version 3 (saved 2008-08-06, file Next2Friends HLRM_08.05.08_v2000_2003.mpp)

Note of the change: Other initial import of source

Last finish stays 2008-11-28. Complete tasks 41 → 42.

Added:

| ID | Task | Duration | Start | Finish | Constraint |
| --- | --- | --- | --- | --- | --- |
| 5 | Seesmic style video posting - Flash (Unscheduled) | 1d? | 2008-10-10 | 2008-10-10 | finish no earlier than 2008-10-10 |
| 22 | Turn off user Blog entry notification | 19d? | 2008-08-05 | 2008-08-29 | finish no earlier than 2008-08-29 |

Removed: 15 Mobile Download First panel contents (LOW); 93 Profile Custom Backgrounds (LOW) (Reschedule)

Changed:

| ID | Task | Start | Finish | Duration | Complete | Total float | Predecessors | Other |
| --- | --- | --- | --- | --- | --- | --- | --- | --- |
| 1 | **ROAD MAP YEAR END (HIGH/LOW)** | 2008-04-01 → 2008-07-23 (+113d) | 2008-11-03 → 2008-11-17 (+14d) | 155d? → 84d? |  | 19d → 9d |  |  |
| 2 | Video text chat viewed in the site and on device - Investigate flash module (Unscheduled) | 2008-04-01 → 2008-10-10 (+192d) | 2008-04-01 → 2008-10-10 (+192d) |  |  | 173d → 35d |  | was named Video messaging from device (Unscheduled); constraint none → finish no earlier than 2008-10-10 |
| 3 | Two way live video conversations form the desktop (and later form mobile) (Unscheduled) | 2008-04-01 → 2008-10-10 (+192d) | 2008-04-01 → 2008-10-10 (+192d) |  |  | 173d → 35d |  | constraint none → finish no earlier than 2008-10-10 |
| 4 | Live stream from Webcam (Time Limit) (Unscheduled) - CLOSED FOR NOW | 2008-04-01 → 2008-10-10 (+192d) | 2008-04-01 → 2008-10-10 (+192d) |  |  | 173d → 35d |  | was named Live stream from Webcam (Time Limit) (Unscheduled); constraint none → finish no earlier than 2008-10-10 |
| 6 | Video messaging from device (Unscheduled) | 2008-04-01 → 2008-10-10 (+192d) | 2008-04-01 → 2008-10-10 (+192d) |  |  | 173d → 35d |  | constraint none → finish no earlier than 2008-10-10 |
| 7 | Social Flea | 2008-07-30 → 2008-08-15 (+16d) | 2008-10-30 → 2008-11-17 (+18d) |  |  | 21d → 9d |  | constraint start no earlier than 2008-07-30 → finish no earlier than 2008-11-17 |
| 9 | Annoy signup prompt (lightbox) 7 popup (HIGH) |  |  |  |  |  |  | was named Annoy signup prompt (lightbox) 3 popup (HIGH) |
| 11 | Music (mp3) Upload/Play/Default track profile entrance (HIGH) WIMPY |  |  |  |  |  |  | was named Music (mp3) Upload/Play/Default track profile entrance (HIGH) |
| 12 | Friend Visualization, Flash Spider (LOW) | 2008-09-01 → 2008-09-03 (+2d) | 2008-09-26 → 2008-09-30 (+4d) |  |  | 45d → 43d |  | constraint start no earlier than 2008-07-23 → finish no earlier than 2008-09-30 |
| 13 | GEOTAG All Content selection (LOW) |  | 2008-11-03 → 2008-11-17 (+14d) | 2.3mo → 2.8mo |  | 19d → 9d |  | constraint start no earlier than 2008-07-29 → finish no earlier than 2008-11-17 |
| 14 | Next2Friends LIVE Mobile cat/tag selection (LOW) JUST CATEGORY | 2008-07-23 → 2008-09-15 (+54d) | 2008-08-19 → 2008-10-10 (+52d) |  |  | 73d → 35d |  | was named Next2Friends LIVE Mobile cat/tag selection (LOW); constraint start no earlier than 2008-07-23 → finish no earlier than 2008-10-10 |
| 16 | Search Tab (HIGH) Isoloted to Advanced Search Page |  | 2008-08-29 → 2008-10-01 (+33d) | 4.8w → 9.4w |  | 65d → 42d |  | was named Search Tab (HIGH); constraint start no earlier than 2008-07-29 → finish no earlier than 2008-10-01 |
| 17 | **Proxy split stream (flv & 3gp) Live consume on Mobile (HIGH)** | 2008-07-30 → 2008-09-18 (+50d) | 2008-09-15 → 2008-10-01 (+16d) | 6.8w → 10d |  | 44d → 42d |  | constraint start no earlier than 2008-07-30 → none |
| 18 | Content Owner Download (flv & 3gp) (HIGH) | 2008-09-16 → 2008-09-18 (+2d) | 2008-09-29 → 2008-10-01 (+2d) |  |  | 44d → 42d | 17 → none | constraint start no earlier than 2008-07-23 → finish no earlier than 2008-10-01 |
| 19 | Virtual Currency/Store (HIGH) (Define list, Store, icons etc.) |  | 2008-09-15 → 2008-11-17 (+63d) | 1.75mo → 4mo |  | 54d → 9d |  | was named Virtual Currency/Store (HIGH); constraint start no earlier than 2008-07-29 → finish no earlier than 2008-11-17 |
| 20 | Groups/Events/Associations --> CLUBS (HIGH) | 2008-07-23 → 2008-08-06 (+14d) | 2008-09-16 → 2008-09-30 (+14d) |  |  | 53d → 43d |  | was named Groups/Events (HIGH); constraint start no earlier than 2008-07-23 → finish no earlier than 2008-09-30 |
| 21 | ProxTags dashboard inlcusion (LOW) |  | 2008-08-20 → 2008-08-29 (+9d) | 3.4w → 4.8w |  | 72d → 65d |  | constraint start no earlier than 2008-07-29 → finish no earlier than 2008-08-29 |
| 23 | Live Video Widget (HIGH) |  | 2008-09-30 → 2008-08-29 (-32d) | 9.2w → 4.8w |  | 43d → 65d |  | constraint start no earlier than 2008-07-29 → finish no earlier than 2008-08-29 |
| 39 | **Phase 1** |  |  |  | 73% → 77% |  |  |  |
| 40 | **Mobile** |  |  |  | 71% → 73% |  |  |  |
| 41 | **Live** |  |  |  | 64% → 67% |  |  |  |
| 42 | **WM5/6** |  |  |  | 75% → 89% |  |  |  |
| 43 | BlackJack 2 |  |  |  | 65% → 85% |  |  |  |
| 69 | **Web** |  |  |  | 74% → 80% |  |  |  |
| 71 | WPF/E Image Editor |  |  |  | 34% → 80% |  |  | was named WPF/E Image Editor (Waiting on Certs for deployment) |
| 84 | Home Page (Flash strip/banners) (Defined) |  | 2008-08-04 A |  | 90% → 100% | 84d → none |  |  |
| 93 | Rich Text wall/blog editing (LOW) (Reschedule) (Dependency) LOOKING IN TO | 2008-07-28 → 2008-08-01 (+4d) | 2008-08-11 → 2008-08-15 (+4d) |  |  | 79d → 75d |  | was named Rich Text wall/blog editing (LOW) (Reschedule); constraint finish no earlier than 2008-08-11 → finish no earlier than 2008-08-15 |
| 96 | Dashboard displays daily text that currently exists under avatar. Yours for others to see. | 2008-07-25 → 2008-08-06 (+12d) | 2008-08-08 → 2008-08-20 (+12d) |  |  | 80d → 72d |  | constraint finish no earlier than 2008-08-08 → finish no earlier than 2008-08-20 |
| 97 | Blog engine propagation/implementation |  |  |  | 75% → 95% |  |  |  |
| 101 | Send external reminder to update stream tag and Desc. | 2008-07-25 → 2008-08-11 (+17d) | 2008-08-08 → 2008-08-25 (+17d) |  |  | 80d → 69d |  | constraint finish no earlier than 2008-08-08 → finish no earlier than 2008-08-25 |

## Version 4 (saved 2008-08-06, file Next2Friends HLRM_08.06.08_v2000_2003.mpp)

Note of the change: Other initial import of source

Last finish stays 2008-11-28.

Added:

| ID | Task | Duration | Start | Finish | Constraint |
| --- | --- | --- | --- | --- | --- |
| 24 | Proximity Tags Extensive | 75d? | 2008-08-05 | 2008-11-17 | start no earlier than 2008-08-05 |

Changed:

| ID | Task | Start | Finish | Duration | Complete | Total float | Other |
| --- | --- | --- | --- | --- | --- | --- | --- |
| 2 | Video text chat viewed in the site and on device - Investigate flash module |  |  |  |  |  | was named Video text chat viewed in the site and on device - Investigate flash module (Unscheduled) |
| 3 | Two way live video conversations form the desktop (and later form mobile) |  |  |  |  |  | was named Two way live video conversations form the desktop (and later form mobile) (Unscheduled) |
| 10 | Favorites in sub profile (extensive) (HIGH) REDEFINED AS BIZ PUSH POST |  |  |  |  |  | was named Favorites in sub profile (extensive) (HIGH) |
| 40 | **Phase 1** |  |  |  | 77% → 76% |  |  |
| 70 | **Web** |  |  |  | 80% → 78% |  |  |
| 72 | WPF/E Image Editor |  | 2008-08-05 → 2008-08-15 (+10d) | 12.2w → 13.8w | 80% → 71% | 83d → 75d | constraint finish no earlier than 2008-08-05 → finish no earlier than 2008-08-15 |
| 96 | Birthday Notification to your friends |  | 2008-08-08 → 2008-08-15 (+7d) | 10w → 11w | 15% → 14% | 80d → 75d | constraint finish no earlier than 2008-08-08 → finish no earlier than 2008-08-15 |
| 99 | **New Flash Player (Tool)** |  | 2008-08-08 → 2008-08-15 (+7d) | 29d → 34d | 90% → 77% | 80d → 75d |  |
| 100 | **Flash player (interactive, Phase 1)** |  | 2008-08-08 → 2008-08-15 (+7d) | 29d → 34d | 90% → 77% | 80d → 75d |  |
| 101 | Flash popup ads (3 sec begin, 10 s/in, 10 s/out) |  | 2008-08-08 → 2008-08-15 (+7d) | 5.8w → 6.8w | 90% → 77% | 80d → 75d | constraint finish no earlier than 2008-08-08 → finish no earlier than 2008-08-15 |
| 102 | Send external reminder to update stream tag and Desc. | 2008-08-11 → 2008-08-15 (+4d) | 2008-08-25 → 2008-08-29 (+4d) |  |  | 69d → 65d | constraint finish no earlier than 2008-08-25 → finish no earlier than 2008-08-29 |

## Version 5 (saved 2008-09-10, file Next2Friends_HLRM_09.07_v2000_2003.mpp)

Note of the change: Other initial import of source

Last finish 2008-11-28 → 2008-12-31 (+33d). Complete tasks 42 → 58.

Added:

| ID | Task | Duration | Start | Finish | Predecessors | Constraint | Resources |
| --- | --- | --- | --- | --- | --- | --- | --- |
| 2 | WPF/E Image Editor - STAGED | 16.2w | 2008-09-09 A | 2008-12-31 |  | finish no earlier than 2008-12-31 | Lawrence; Anthony |
| 5 | Blog engine propagation/implementation - STAGED | 16.4w | 2008-09-09 A | 2008-12-31 |  | finish no earlier than 2008-12-31 | Hamid; Omid; Lawrence; Alex; Anthony |
| 102 | **Mobile (END 2008)** | 82d? | 2008-09-09 | 2008-12-31 |  |  |  |
| 103 | AMAZE GPS INTEGRATION - J2ME | 39d | 2008-09-09 | 2008-10-31 |  | start no earlier than 2008-09-09 | Anthony; Lawrence; Ady; Alex; Hamid |
| 105 | **GEOMessage (Next2Friends Social Addition)** | 70d? | 2008-09-09 | 2008-12-15 |  |  |  |
| 109 | WM | 3.5mo | 2008-09-09 | 2008-12-15 | 106SS | start no earlier than 2008-09-09 | Ivan; Vitaliy; Alex; Anthony; Stefano; Valery; Micaila |
| 110 | MOTO OS | 70d? | 2008-09-09 | 2008-12-15 |  | start no earlier than 2008-09-09 |  |
| 111 | 8120 | 70d? | 2008-09-09 | 2008-12-15 |  | start no earlier than 2008-09-09 |  |
| 112 | 8320 | 3.5mo | 2008-09-09 | 2008-12-15 | 113SS | finish no earlier than 2008-12-15 | Alex; Anthony; Ivan; Stefano; Vitaliy; Micaila; Valery |
| 114 | **N2FBlogger (Next2Friends Social Addition)** | 50d? | 2008-09-09 | 2008-11-17 |  |  |  |
| 117 | WM | 2.5mo | 2008-09-09 | 2008-11-17 | 121SS | finish no earlier than 2008-11-17 | Stefano; Ivan; Vitaliy; Micaila; Valery; Alex; Anthony |
| 120 | 8120 | 2.5mo | 2008-09-09 | 2008-11-17 | 117SS | finish no earlier than 2008-11-17 | Stefano; Alex; Micaila; Ivan; Vitaliy; Anthony; Valery |
| 121 | 8320 | 2.5mo | 2008-09-09 | 2008-11-17 | 116SS | finish no earlier than 2008-11-17 | Micaila; Ivan; Vitaliy; Anthony; Alex; Valery; Stefano |
| 122 | MOTO OS | 50d? | 2008-09-09 | 2008-11-17 |  | start no earlier than 2008-09-09 |  |
| 123 | **Next2Friends Social** | 65d | 2008-09-09 | 2008-12-08 |  |  |  |
| 125 | **Next2Friends LIVE** | 82d | 2008-09-09 | 2008-12-31 |  |  |  |
| 129 | **RALLY (SEPTEMBER)** | 14d? | 2008-09-09 | 2008-09-26 |  |  |  |
| 130 | **Next2Friends Social** | 14d? | 2008-09-09 | 2008-09-26 |  |  |  |
| 131 | BREW | 14d? | 2008-09-09 | 2008-09-26 |  | start no earlier than 2008-09-09 |  |
| 132 | J2ME | 14d? | 2008-09-09 | 2008-09-26 |  | start no earlier than 2008-09-09 |  |
| 133 | WM | 14d? | 2008-09-09 | 2008-09-26 |  | start no earlier than 2008-09-09 |  |
| 134 | iPhone | 14d? | 2008-09-09 | 2008-09-26 |  | start no earlier than 2008-09-09 |  |
| 135 | 8120 | 14d? | 2008-09-09 | 2008-09-26 |  | start no earlier than 2008-09-09 |  |
| 136 | 8320 | 14d? | 2008-09-09 | 2008-09-26 |  | start no earlier than 2008-09-09 |  |
| 137 | MOTO OS | 14d? | 2008-09-09 | 2008-09-26 |  | start no earlier than 2008-09-09 |  |
| 138 | **Next2Friends LIVE** | 14d? | 2008-09-09 | 2008-09-26 |  |  | Anthony; Stefano |
| 139 | 8320 (6s Delay - Real Stream) | 14d? | 2008-09-09 | 2008-09-26 |  | start no earlier than 2008-09-09 |  |
| 140 | 8120 (6s Delay - Real Stream) | 14d? | 2008-09-09 | 2008-09-26 |  | start no earlier than 2008-09-09 | Anthony; Stefano |

Removed: 4 Live stream from Webcam (Time Limit) (Unscheduled) - CLOSED FOR NOW; 7 Social Flea; 40 Phase 1; 72 WPF/E Image Editor; 98 Blog engine propagation/implementation; 107 Phase 2; 108 Mobile; 109 AMAZE GPS INTEGRATION; 110 J2ME Next2Friends Mobile; 111 Live; 114 N2FBlogger; 117 Symbian; 118 WM5/6; 121 BB J2ME; 122 GEOMessage; 126 BB J2ME; 127 WM5/6; 128 Symbian; 130 ASK/TAG - Next2Friends Mobile; 132 Web; 133 Public API BETA; 134 User Profile Ad Auction

Changed:

| ID | Task | Start | Finish | Duration | Complete | Total float | Predecessors | Other |
| --- | --- | --- | --- | --- | --- | --- | --- | --- |
| 1 | **Web (END 2008)** | 2008-07-23 → 2008-07-01 A (-22d) | 2008-11-17 → 2008-12-31 (+44d) | 84d? → 132d? | 0% → 14% | 9d → 0d |  | was named ROAD MAP YEAR END (HIGH/LOW) |
| 3 | Rich Text wall/blog editing (LOW) (Reschedule) (Dependency) LOOKING IN TO | 2008-08-01 → 2008-09-09 (+39d) | 2008-08-15 → 2008-12-31 (+138d) | 2.2w → 16.4w |  | 75d → 0d |  | constraint finish no earlier than 2008-08-15 → finish no earlier than 2008-12-31 |
| 4 | Birthday Notification to your friends | 2008-06-02 A → 2008-09-09 A (+99d) | 2008-08-15 → 2008-12-31 (+138d) | 11w → 5.15w | 14% → 30% | 75d → 0d |  | constraint finish no earlier than 2008-08-15 → finish no earlier than 2008-12-31 |
| 6 | **New Flash Player (Tool)** |  | 2008-08-15 → 2008-12-31 (+138d) | 34d → 132d | 77% → 20% | 75d → 0d |  |  |
| 7 | **Flash player (interactive, Phase 1)** |  | 2008-08-15 → 2008-12-31 (+138d) | 34d → 132d | 77% → 20% | 75d → 0d |  |  |
| 8 | Flash popup ads (3 sec begin, 10 s/in, 10 s/out) |  | 2008-08-15 → 2008-12-31 (+138d) | 6.8w → 26.4w | 77% → 20% | 75d → 0d |  | constraint finish no earlier than 2008-08-15 → finish no earlier than 2008-12-31 |
| 9 | Send external reminder to update stream tag and Desc. | 2008-08-15 → 2008-09-09 (+25d) | 2008-08-29 → 2008-12-31 (+124d) | 11d → 82d |  | 65d → 0d |  | constraint finish no earlier than 2008-08-29 → finish no earlier than 2008-12-31 |
| 10 | Flash Video Editor | 2008-08-01 A → 2008-09-09 A (+39d) | 2008-09-30 → 2008-12-31 (+92d) | 2.15mo → 4.1mo | 50% → 26% | 43d → 0d |  | constraint finish no earlier than 2008-09-30 → finish no earlier than 2008-12-31 |
| 11 | Video text chat viewed in the site and on device - Investigate flash module | 2008-10-10 → 2008-09-09 (-31d) | 2008-10-10 → 2008-12-31 (+82d) | 1d? → 82d? |  | 35d → 0d |  | constraint finish no earlier than 2008-10-10 → start no earlier than 2008-09-09 |
| 12 | Two way live video conversations form the desktop (and later form mobile) | 2008-10-10 → 2008-09-09 (-31d) | 2008-10-10 → 2008-12-31 (+82d) | 1d? → 82d? |  | 35d → 0d |  | constraint finish no earlier than 2008-10-10 → start no earlier than 2008-09-09 |
| 13 | Seesmic style video posting - Flash (Unscheduled) | 2008-10-10 → 2008-09-09 (-31d) | 2008-10-10 → 2008-12-31 (+82d) | 1d? → 82d? |  | 35d → 0d |  | constraint finish no earlier than 2008-10-10 → start no earlier than 2008-09-09 |
| 14 | RSS all site and profile content (HIGH) - STAGED | 2008-07-23 → 2008-09-09 A (+48d) | 2008-08-29 → 2008-12-31 (+124d) | 5.6w → 16.4w | 0% → 32% | 9d → 0d |  | was named RSS all site and profile content (HIGH); constraint finish no earlier than 2008-08-29 → finish no earlier than 2008-12-31 |
| 15 | Annoy signup prompt (lightbox) 7 popup (HIGH) - STAGED | 2008-07-29 → 2008-09-09 A (+42d) | 2008-08-29 → 2008-12-31 (+124d) | 4.8w → 16.4w | 0% → 28% | 65d → 0d |  | was named Annoy signup prompt (lightbox) 7 popup (HIGH); constraint start no earlier than 2008-07-29 → finish no earlier than 2008-12-31 |
| 16 | Favorites in sub profile (extensive) (HIGH) REDEFINED AS BIZ PUSH POST | 2008-07-29 → 2008-09-09 (+42d) | 2008-09-30 → 2008-12-31 (+92d) | 2.3mo → 4.1mo |  | 43d → 0d |  | constraint start no earlier than 2008-07-29 → start no earlier than 2008-09-09 |
| 17 | Music (mp3) Upload/Play/Default track profile entrance (HIGH) WIMPY | 2008-07-29 → 2008-09-09 A (+42d) | 2008-08-15 → 2008-12-31 (+138d) | 2.8w → 16.4w | 0% → 17% | 75d → 0d |  | constraint start no earlier than 2008-07-29 → finish no earlier than 2008-12-31 |
| 18 | Friend Visualization, Flash Spider (LOW) | 2008-09-03 → 2008-09-09 (+6d) | 2008-09-30 → 2008-12-31 (+92d) | 1mo → 4.1mo |  | 43d → 0d | 14 → none | constraint finish no earlier than 2008-09-30 → finish no earlier than 2008-12-31 |
| 19 | GEOTAG All Content selection (LOW) | 2008-09-01 → 2008-09-09 (+8d) | 2008-11-17 → 2008-12-31 (+44d) | 2.8mo → 4.1mo |  | 9d → 0d | 14 → none | constraint finish no earlier than 2008-11-17 → finish no earlier than 2008-12-31 |
| 20 | Distance to Friend m/km pop gmaps (HIGH) - REDEFINED | 2008-07-29 → 2008-09-09 (+42d) | 2008-08-29 → 2008-12-31 (+124d) | 4.8w → 16.4w |  | 65d → 0d |  | was named Distance to Friend m/km pop gmaps (HIGH); constraint start no earlier than 2008-07-29 → finish no earlier than 2008-12-31 |
| 21 | Search Tab (HIGH) Isoloted to Advanced Search Page | 2008-07-29 → 2008-09-09 (+42d) | 2008-10-01 → 2008-12-31 (+91d) | 9.4w → 16.4w |  | 42d → 0d |  | constraint finish no earlier than 2008-10-01 → start no earlier than 2008-09-09 |
| 22 | **Proxy split stream (flv & 3gp) Live consume on Mobile (HIGH)** | 2008-09-18 → 2008-12-18 (+91d) | 2008-10-01 → 2008-12-31 (+91d) |  |  | 42d → 0d |  |  |
| 23 | Content Owner Download (flv & 3gp) (HIGH) | 2008-09-18 → 2008-12-18 (+91d) | 2008-10-01 → 2008-12-31 (+91d) |  |  | 42d → 0d |  | constraint finish no earlier than 2008-10-01 → finish no earlier than 2008-12-31 |
| 24 | Virtual Currency/Store (HIGH) (Define list, Store, icons etc.) | 2008-07-29 → 2008-09-09 (+42d) | 2008-11-17 → 2008-12-31 (+44d) | 4mo → 4.1mo |  | 9d → 0d |  | constraint finish no earlier than 2008-11-17 → finish no earlier than 2008-12-31 |
| 25 | Groups/Events/Associations --> CLUBS (HIGH) | 2008-08-06 → 2008-09-09 (+34d) | 2008-09-30 → 2008-12-31 (+92d) | 2mo → 4.1mo |  | 43d → 0d |  | constraint finish no earlier than 2008-09-30 → finish no earlier than 2008-12-31 |
| 26 | ProxTags dashboard inlcusion (LOW) | 2008-07-29 → 2008-09-09 A (+42d) | 2008-08-29 → 2008-12-31 (+124d) | 4.8w → 16.4w | 0% → 29% | 65d → 0d |  | constraint finish no earlier than 2008-08-29 → finish no earlier than 2008-12-31 |
| 27 | Turn off user Blog entry notification - STAGED | 2008-08-05 → 2008-09-09 A (+35d) | 2008-08-29 → 2008-12-31 (+124d) | 19d? → 82d? | 0% → 22% | 65d → 0d |  | was named Turn off user Blog entry notification; constraint finish no earlier than 2008-08-29 → finish no earlier than 2008-12-31 |
| 28 | Live Video Widget (HIGH) | 2008-07-29 → 2008-09-09 A (+42d) | 2008-08-29 → 2008-12-31 (+124d) | 4.8w → 16.4w | 0% → 29% | 65d → 0d |  | constraint finish no earlier than 2008-08-29 → finish no earlier than 2008-12-31 |
| 29 | Proximity Tags Extensive | 2008-08-05 → 2008-09-09 (+35d) | 2008-11-17 → 2008-12-31 (+44d) | 75d? → 82d? |  | 9d → 0d |  | constraint start no earlier than 2008-08-05 → start no earlier than 2008-09-09 |
| 45 | **Mobile (PHASE 1)** |  | 2008-09-05 A |  | 73% → 100% | 60d → none |  | was named Mobile |
| 46 | **Live** |  | 2008-09-05 A |  | 67% → 100% | 60d → none |  |  |
| 47 | **WM5/6** |  | 2008-08-15 A |  | 89% → 100% | 75d → none |  |  |
| 48 | BlackJack 2 |  | 2008-08-15 A |  | 85% → 100% | 75d → none |  |  |
| 50 | **BREW/J2ME** |  | 2008-09-01 A |  | 51% → 100% | 64d → none |  |  |
| 51 | LG Voyager (ISSUE) (NOT POSSIBLE AT THE MOMENT) | 2008-07-22 A | 2008-09-01 A |  | 0% → 100% | 64d → none |  |  |
| 52 | RAZR (3GP Parser 80% Complete) |  | 2008-08-25 A |  | 65% → 100% | 69d → none |  |  |
| 53 | RAZR 2 (3GP Parser 80% Complete) |  | 2008-08-25 A |  | 65% → 100% | 69d → none |  |  |
| 54 | **BB J2ME** |  | 2008-09-05 A |  | 60% → 100% | 60d → none |  |  |
| 55 | BB 8320/30 (3GP Parser 80% Complete) |  | 2008-09-05 A |  | 60% → 100% | 60d → none |  |  |
| 59 | **ASK/TAG - Next2Friends Mobile** |  | 2008-09-01 A |  | 77% → 100% | 64d → none |  |  |
| 60 | **WM5/6** |  | 2008-08-15 A |  | 65% → 100% | 75d → none |  |  |
| 61 | BlackJack 2 |  | 2008-08-15 A |  | 65% → 100% | 75d → none |  |  |
| 62 | Motorola Q |  | 2008-08-15 A |  | 65% → 100% | 75d → none |  |  |
| 67 | **BB J2ME** |  | 2008-09-01 A |  | 65% → 100% | 64d → none |  |  |
| 68 | BB 8320/30 |  | 2008-09-01 A |  | 65% → 100% | 64d → none |  |  |
| 69 | **Symbian** |  | 2008-08-29 A |  | 60% → 100% | 65d → none |  |  |
| 70 | N75 |  | 2008-08-29 A |  | 60% → 100% | 65d → none |  |  |
| 71 | N/E Series |  | 2008-08-29 A |  | 60% → 100% | 65d → none |  |  |
| 72 | iPhone |  | 2008-08-29 A |  | 60% → 100% | 65d → none |  |  |
| 73 | J2ME |  | 2008-06-26 A |  | 95% → 100% | 111d → none |  |  |
| 74 | **Web (PHASE 1)** |  | 2008-09-30 → 2008-08-20 A (-41d) | 109d → 80d | 78% → 100% | 43d → none |  | was named Web |
| 84 | Auto Load Chat with check to disable - STAGED |  | 2008-08-20 A |  | 90% → 100% | 72d → none |  | was named Auto Load Chat with check to disable (STAGED) |
| 85 | View User Profile From Inbox message - STAGED |  | 2008-08-20 A |  | 90% → 100% | 72d → none |  | was named View User Profile From Inbox message (STAGED) |
| 92 | Profile more colors | 2008-07-25 A | 2008-08-15 A |  | 0% → 100% | 75d → none |  |  |
| 98 | Dashboard displays daily text that currently exists under avatar. Yours for others to see. | 2008-08-06 A | 2008-08-20 A |  | 0% → 100% | 72d → none |  |  |
| 104 | Video messaging from device (Unscheduled) | 2008-10-10 → 2008-12-31 (+82d) | 2008-10-10 → 2008-12-31 (+82d) |  |  | 35d → 0d |  | constraint finish no earlier than 2008-10-10 → finish no earlier than 2008-12-31 |
| 106 | iPhone | 2008-07-30 → 2008-09-09 (+41d) | 2008-10-15 → 2008-12-15 (+61d) | 448h → 3.5mo |  | 32d → 12d | none → 108SS | constraint start no earlier than 2008-07-30 → finish no earlier than 2008-12-15; resources Stefano; Micaila; Anthony → Stefano; Valery; Alex; Anthony; Micaila; Ivan; Vitaliy |
| 107 | J2ME | 2008-10-01 → 2008-09-09 (-22d) | 2008-11-14 → 2008-12-15 (+31d) | 1.65mo → 3.5mo |  | 10d → 12d | 119SS → none | constraint start no earlier than 2008-10-01 → finish no earlier than 2008-12-15; resources Vitaliy; Ivan; Micaila; Alex; Anthony; Stefano; Valery → Alex; Micaila; Anthony; Stefano; Valery; Ivan; Vitaliy |
| 108 | Sony UIQ | 2008-10-01 → 2008-09-09 (-22d) | 2008-10-24 → 2008-12-15 (+52d) | 3.6w → 3.5mo |  | 25d → 12d | none → 112SS | constraint start no earlier than 2008-10-01 → finish no earlier than 2008-12-15; resources Micaila; Anthony; Stefano → Vitaliy; Stefano; Ivan; Alex; Valery; Anthony; Micaila |
| 113 | BREW | 2008-10-01 → 2008-09-09 (-22d) | 2008-11-14 → 2008-12-15 (+31d) | 1.65mo → 3.5mo |  | 10d → 12d | SymbianSS → none | constraint start no earlier than 2008-10-01 → finish no earlier than 2008-12-15; resources Stefano; Alex; Valery; Ivan; Micaila; Vitaliy; Anthony → Vitaliy; Ivan; Anthony; Stefano; Valery; Alex; Micaila |
| 115 | J2ME | 2008-10-01 → 2008-09-09 (-22d) | 2008-11-28 → 2008-11-17 (-11d) | 2.15mo → 2.5mo |  | 0d → 32d | none → 119SS | constraint start no earlier than 2008-10-01 → finish no earlier than 2008-11-17; resources Alex; Micaila; Anthony; Stefano; Valery; Ivan; Vitaliy → Vitaliy; Ivan; Micaila; Alex; Anthony; Stefano; Valery |
| 116 | Sony UIQ | 2008-10-01 → 2008-09-09 (-22d) | 2008-11-14 → 2008-11-17 (+3d) | 1.65mo → 2.5mo |  | 10d → 32d | 107SS → 115SS | constraint start no earlier than 2008-10-01 → finish no earlier than 2008-11-17 |
| 118 | BREW | 2008-10-01 → 2008-09-09 (-22d) | 2008-11-28 → 2008-11-17 (-11d) | 2.15mo → 2.5mo |  | 0d → 32d | BB J2MESS → 120SS | constraint start no earlier than 2008-10-01 → finish no earlier than 2008-11-17; resources Vitaliy; Ivan; Anthony; Stefano; Valery; Alex; Micaila → Stefano; Alex; Valery; Ivan; Micaila; Vitaliy; Anthony |
| 119 | iPhone | 2008-10-01 → 2008-09-09 (-22d) | 2008-11-14 → 2008-11-17 (+3d) | 1.65mo → 2.5mo |  | 10d → 32d |  | constraint start no earlier than 2008-10-01 → finish no earlier than 2008-11-17 |
| 124 | Sony UIQ | 2008-10-01 → 2008-09-09 (-22d) | 2008-11-28 → 2008-12-08 (+10d) | 2.15mo → 13w |  | 0d → 17d | SymbianSS → none | constraint start no earlier than 2008-10-01 → finish no earlier than 2008-12-08; resources Vitaliy; Stefano; Ivan; Alex; Valery; Anthony; Micaila → Vitaliy; Valery; Ivan; Stefano; Micaila; Alex; Anthony |
| 126 | Next2Friends LIVE Mobile cat/tag selection (LOW) JUST CATEGORY | 2008-09-15 → 2008-09-09 (-6d) | 2008-10-10 → 2008-12-31 (+82d) | 1mo → 4.1mo |  | 35d → 0d |  | constraint finish no earlier than 2008-10-10 → finish no earlier than 2008-12-31 |
| 127 | iPhone | 2008-10-01 → 2008-09-09 (-22d) | 2008-11-28 → 2008-12-31 (+33d) | 2.15mo → 312h |  |  | 124SS → none | constraint start no earlier than 2008-10-01 → finish no earlier than 2008-12-31; resources Stefano; Valery; Alex; Anthony; Micaila; Ivan; Vitaliy → Stefano; Micaila; Anthony |
| 128 | Sony UIQ | 2008-11-03 → 2008-12-08 (+35d) | 2008-11-28 → 2008-12-31 (+33d) | 4w → 3.6w |  |  |  | constraint start no earlier than 2008-11-03 → finish no earlier than 2008-12-31; resources Vitaliy; Valery; Ivan; Stefano; Micaila; Alex; Anthony → Micaila; Anthony; Stefano |

## Version 6 (saved 2008-09-11, file Next2Friends_HLRM_09.09_v2000_2003.mpp)

Note of the change: Other initial import of source

Last finish 2008-12-31 → 2009-02-27 (+58d). Complete tasks 58 → 61.

Added:

| ID | Task | Duration | Start | Finish | Constraint | Resources |
| --- | --- | --- | --- | --- | --- | --- |
| 2 | Corporate Profile Bug Fixes | 15d? | 2008-09-09 | 2008-09-29 | finish no earlier than 2008-09-29 |  |
| 3 | Blog Chronilogical Order Fix | 16d? | 2008-09-09 A | 2008-09-30 | start no earlier than 2008-09-09 |  |
| 30 | User Location (GEO) Update from Profile | 81d? | 2008-09-10 | 2008-12-31 | finish no earlier than 2008-12-31 |  |
| 31 | Dashboard inclusion of friend uploaded photos. | 19d? | 2008-09-10 | 2008-10-06 | start no earlier than 2008-09-10 |  |
| 32 | Dashboard inclustion of new Mp3 upload from friend | 19d? | 2008-09-10 | 2008-10-06 | start no earlier than 2008-09-10 |  |
| 128 | Android | 124d? | 2008-09-09 | 2009-02-27 | start no earlier than 2008-09-09 |  |
| 129 | Instinct | 124d? | 2008-09-09 | 2009-02-27 | start no earlier than 2008-09-09 |  |
| 130 | HTC Diamond Pro | 124d? | 2008-09-09 | 2009-02-27 | start no earlier than 2008-09-09 |  |
| 131 | HTC Diamond | 124d? | 2008-09-09 | 2009-02-27 | start no earlier than 2008-09-09 |  |
| 132 | BB Thunder | 124d? | 2008-09-09 | 2009-02-27 | start no earlier than 2008-09-09 |  |
| 133 | BB Bold | 124d? | 2008-09-09 | 2009-02-27 | start no earlier than 2008-09-09 |  |
| 137 | Android | 124d? | 2008-09-09 | 2009-02-27 | start no earlier than 2008-09-09 |  |
| 138 | Instinct | 124d? | 2008-09-09 | 2009-02-27 | start no earlier than 2008-09-09 |  |
| 139 | HTC Diamond Pro | 124d? | 2008-09-09 | 2009-02-27 | start no earlier than 2008-09-09 |  |
| 140 | HTC Diamond | 124d? | 2008-09-09 | 2009-02-27 | start no earlier than 2008-09-09 |  |
| 141 | BB Thunder | 124d? | 2008-09-09 | 2009-02-27 | start no earlier than 2008-09-09 |  |
| 142 | BB Bold | 124d? | 2008-09-09 | 2009-02-27 | start no earlier than 2008-09-09 |  |
| 144 | Sony i902 (More Investigation) | 13w | 2008-09-09 | 2008-12-08 | finish no earlier than 2008-12-08 | Vitaliy; Valery; Ivan; Stefano; Micaila; Alex; Anthony |

Removed: 21 Search Tab (HIGH) Isoloted to Advanced Search Page; 128 Sony UIQ

Changed:

| ID | Task | Start | Finish | Duration | Complete | Total float | Other |
| --- | --- | --- | --- | --- | --- | --- | --- |
| 1 | **Web (END 2008)** |  |  |  | 14% → 25% | 0d → 42d |  |
| 4 | WPF/E Image Editor - STAGED |  | 2008-12-31 → 2008-11-05 (-56d) | 16.2w → 5w | 81% → 95% | 0d → 82.55d | constraint finish no earlier than 2008-12-31 → finish no earlier than 2008-10-13 |
| 6 | Birthday Notification to your friends | 2008-09-09 A → 2008-09-09 | 2008-12-31 → 2008-10-15 (-77d) | 5.15w → 5.4w | 30% → 0% | 0d → 97d | constraint finish no earlier than 2008-12-31 → finish no earlier than 2008-10-15; resources Lawrence; Hamid; Omid → Lawrence [28.5%]; Hamid [28.5%]; Omid [28.5%] |
| 7 | Blog engine propagation/implementation - STAGED |  | 2008-12-31 → 2008-09-22 (-100d) | 16.4w → 1w | 24% → 95% | 0d → 114d | constraint finish no earlier than 2008-12-31 → finish no earlier than 2008-09-22 |
| 11 | Send external reminder to update stream tag and Desc. |  | 2008-12-31 → 2008-09-22 (-100d) | 82d → 10d |  | 0d → 114d | constraint finish no earlier than 2008-12-31 → finish no earlier than 2008-09-22 |
| 16 | RSS all site and profile content (HIGH) - STAGED |  | 2008-12-31 → 2008-09-22 (-100d) | 16.4w → 2w | 32% → 95% | 0d → 114d | constraint finish no earlier than 2008-12-31 → finish no earlier than 2008-09-22 |
| 17 | Annoy signup prompt (lightbox) 7 popup (HIGH) - STAGED |  | 2008-12-31 → 2008-09-29 (-93d) | 16.4w → 2w | 28% → 95% | 0d → 109.9d | constraint finish no earlier than 2008-12-31 → finish no earlier than 2008-09-22 |
| 18 | Favorites in sub profile (extensive) (HIGH) REDEFINED AS "NEWS" FOR CORP ONLY |  | 2008-12-31 → 2008-11-17 (-44d) | 4.1mo → 2.5mo |  | 0d → 74d | was named Favorites in sub profile (extensive) (HIGH) REDEFINED AS BIZ PUSH POST; constraint start no earlier than 2008-09-09 → finish no earlier than 2008-11-17 |
| 19 | Music (mp3) Upload/Play/Default track profile entrance (HIGH) WIMPY |  | 2008-12-31 A |  | 17% → 100% | 0d → none |  |
| 20 | Friend Visualization, Flash Spider (LOW) RSS DEPEND |  |  |  |  | 0d → 42d | was named Friend Visualization, Flash Spider (LOW) |
| 21 | GEOTAG All Content selection (LOW) |  | 2008-12-31 → 2008-11-17 (-44d) | 4.1mo → 2.5mo |  | 0d → 74d | constraint finish no earlier than 2008-12-31 → finish no earlier than 2008-11-17 |
| 22 | Distance to Friend m/km pop gmaps (HIGH) - REDEFINED | 2008-09-09 A | 2008-12-31 → 2008-10-15 (-77d) | 16.4w → 5.4w | 0% → 95% | 0d → 97d | constraint finish no earlier than 2008-12-31 → finish no earlier than 2008-10-15 |
| 27 | ProxTags dashboard inlcusion (LOW) |  | 2008-12-31 A |  | 29% → 100% | 0d → none |  |
| 29 | Live Video Widget (HIGH) |  | 2008-12-31 A |  | 29% → 100% | 0d → none |  |
| 106 | **Mobile (END 2008)** |  | 2008-12-31 → 2009-02-27 (+58d) | 82d? → 124d? |  |  |  |
| 127 | **Next2Friends Social** |  | 2008-12-08 → 2009-02-27 (+81d) | 65d → 124d? |  | 17d → 0d |  |
| 134 | Sony i902 (More Investigation) |  | 2008-12-08 → 2009-02-27 (+81d) | 13w → 24.8w |  | 17d → 0d | was named Sony UIQ; constraint finish no earlier than 2008-12-08 → finish no earlier than 2009-02-27 |
| 135 | **Next2Friends LIVE** |  | 2008-12-31 → 2009-02-27 (+58d) | 82d → 124d? |  |  |  |
| 143 | iPhone (More Investigation) |  |  |  |  | 0d → 42d | was named iPhone |
